How a schedule from MS Project changed from version to version. A marks actual dates.

## Version 1 (saved 2026-03-24)

Note of the change: add lab 1,2,3

| ID | WBS | Task | Duration | Start | Finish | Predecessors | Total float | Constraint |
| --- | --- | --- | --- | --- | --- | --- | --- | --- |
| 1 |  | Начало проекта | 0d | 2026-03-02 09:00 | 2026-03-02 09:00 |  | 46.14d |  |
| 2 | 2 | **Создание интерфейса** | 77.89d | 2026-03-02 09:00 | 2026-06-24 11:07 | 1 | 0d |  |
| 3 | 2.1 | **Разработка дизайна интерфейса** | 25.62d | 2026-03-02 09:00 | 2026-04-07 15:00 |  | 46.14d |  |
| 4 |  | Разработка 2D графических элементов | 3w | 2026-03-02 09:00 | 2026-03-24 12:00 |  | 46.14d |  |
| 5 |  | Разработка 3D графических элементов | 2w | 2026-03-02 09:00 | 2026-03-17 11:00 | 4SS | 46.14d |  |
| 6 |  | Создание заставки | 3w | 2026-03-17 11:00 | 2026-04-07 15:00 | 5 | 46.14d |  |
| 7 |  | Программирование интерфейса | 1.23w | 2026-06-16 10:07 | 2026-06-24 11:07 | 3, 12 | 0d |  |
| 8 | 3 | **Построение базы объектов** | 85.25d | 2026-03-24 13:00 | 2026-07-27 09:00 |  | 2.61d |  |
| 9 |  | Анализ и построение структуры базы объектов | 2w | 2026-03-24 13:00 | 2026-04-07 15:00 |  | 2.61d |  |
| 10 |  | Программирование средств обработки базы объектов | 3w | 2026-04-07 15:00 | 2026-04-28 15:00 | 9 | 2.61d |  |
| 11 |  | Наполнение базы объектов | 12w | 2026-04-28 15:00 | 2026-07-27 09:00 | 10 | 2.61d |  |
| 12 | 4 | **Создание ядра GIS** | 71.77d | 2026-03-02 09:00 | 2026-06-16 10:07 |  | 0d |  |
| 13 |  | Анализ и проектирование ядра | 3w | 2026-03-02 09:00 | 2026-03-24 12:00 |  | 0d |  |
| 14 |  | Создание модели ядра | 2.02w | 2026-03-24 13:00 | 2026-04-07 13:49 | 13 | 0d |  |
| 15 |  | Тестирование модели ядра | 0.5w | 2026-04-07 13:49 | 2026-04-10 08:49 | 14 | 0d |  |
| 16 |  | Создание рабочей версии ядра | 8.76w | 2026-04-10 08:49 | 2026-06-16 10:07 | 15 | 0d |  |
| 17 |  | Создание мультимедия - наполнения | 6w | 2026-04-07 15:00 | 2026-05-22 16:00 | 3 | 46.73d |  |
| 18 |  | Создание справочной системы | 2w | 2026-07-06 16:07 | 2026-07-21 16:07 | 7 | 5.84d |  |
| 19 | 7 | **Создание руководства пользователя** | 18.5d | 2026-06-09 10:07 | 2026-07-06 16:07 | 7FS-10d | 0d |  |
| 20 |  | Разработка дизайна руководства | 1w | 2026-06-09 10:07 | 2026-06-17 15:07 |  | 0d |  |
| 21 |  | Написание руководства пользователя | 3w | 2026-06-11 11:07 | 2026-07-06 16:07 | 20SS+2d | 0d |  |
| 22 | 8 | **Создание web - сайта и поддержка** | 25.38d | 2026-06-11 11:07 | 2026-07-17 15:07 |  | 0d |  |
| 23 |  | Разработка структуры сайта | 1d | 2026-06-11 11:07 | 2026-06-15 11:07 | 21SS | 0d |  |
| 24 |  | Разработка дизайна сайта | 1.45w | 2026-06-15 11:07 | 2026-06-25 10:07 | 23 | 0d |  |
| 25 |  | Наполнение сайта | 3w | 2026-06-25 10:07 | 2026-07-17 15:07 | 24 | 0d |  |
| 26 |  | Тестирование сайта | 2.59w | 2026-07-10 15:07 | 2026-07-29 14:52 | 22FS-1w | 0d |  |
| 27 |  | Сдача сайта в эксплуатацию | 0d | 2026-07-29 14:52 | 2026-07-29 14:52 | 26 | 0d |  |
| 28 | 11 | **Совещание** | 100.75d | 2026-03-04 09:00 | 2026-07-29 10:00 |  | 0d |  |
| 29 |  | Совещание 1 | 1h | 2026-03-04 09:00 | 2026-03-04 10:00 |  |  | start no earlier than 2026-03-04 09:00 |
| 30 |  | Совещание 2 | 1h | 2026-03-11 09:00 | 2026-03-11 10:00 |  |  | start no earlier than 2026-03-11 09:00 |
| 31 |  | Совещание 3 | 1h | 2026-03-18 09:00 | 2026-03-18 10:00 |  |  | start no earlier than 2026-03-18 09:00 |
| 32 |  | Совещание 4 | 1h | 2026-03-25 09:00 | 2026-03-25 10:00 |  |  | start no earlier than 2026-03-25 09:00 |
| 33 |  | Совещание 5 | 1h | 2026-04-01 09:00 | 2026-04-01 10:00 |  |  | start no earlier than 2026-04-01 09:00 |
| 34 |  | Совещание 6 | 1h | 2026-04-08 09:00 | 2026-04-08 10:00 |  |  | start no earlier than 2026-04-08 09:00 |
| 35 |  | Совещание 7 | 1h | 2026-04-15 09:00 | 2026-04-15 10:00 |  |  | start no earlier than 2026-04-15 09:00 |
| 36 |  | Совещание 8 | 1h | 2026-04-22 09:00 | 2026-04-22 10:00 |  |  | start no earlier than 2026-04-22 09:00 |
| 37 |  | Совещание 9 | 1h | 2026-04-29 09:00 | 2026-04-29 10:00 |  |  | start no earlier than 2026-04-29 09:00 |
| 38 |  | Совещание 10 | 1h | 2026-05-06 09:00 | 2026-05-06 10:00 |  |  | start no earlier than 2026-05-06 09:00 |
| 39 |  | Совещание 11 | 1h | 2026-05-13 09:00 | 2026-05-13 10:00 |  |  | start no earlier than 2026-05-13 09:00 |
| 40 |  | Совещание 12 | 1h | 2026-05-20 09:00 | 2026-05-20 10:00 |  |  | start no earlier than 2026-05-20 09:00 |
| 41 |  | Совещание 13 | 1h | 2026-05-27 09:00 | 2026-05-27 10:00 |  |  | start no earlier than 2026-05-27 09:00 |
| 42 |  | Совещание 14 | 1h | 2026-06-03 09:00 | 2026-06-03 10:00 |  |  | start no earlier than 2026-06-03 09:00 |
| 43 |  | Совещание 15 | 1h | 2026-06-10 09:00 | 2026-06-10 10:00 |  |  | start no earlier than 2026-06-10 09:00 |
| 44 |  | Совещание 16 | 1h | 2026-06-17 09:00 | 2026-06-17 10:00 |  |  | start no earlier than 2026-06-17 09:00 |
| 45 |  | Совещание 17 | 1h | 2026-06-24 09:00 | 2026-06-24 10:00 |  |  | start no earlier than 2026-06-24 09:00 |
| 46 |  | Совещание 18 | 1h | 2026-07-01 09:00 | 2026-07-01 10:00 |  |  | start no earlier than 2026-07-01 09:00 |
| 47 |  | Совещание 19 | 1h | 2026-07-08 09:00 | 2026-07-08 10:00 |  |  | start no earlier than 2026-07-08 09:00 |
| 48 |  | Совещание 20 | 1h | 2026-07-15 09:00 | 2026-07-15 10:00 |  |  | start no earlier than 2026-07-15 09:00 |
| 49 |  | Совещание 21 | 1h | 2026-07-22 09:00 | 2026-07-22 10:00 |  |  | start no earlier than 2026-07-22 09:00 |
| 50 |  | Совещание 22 | 1h | 2026-07-29 09:00 | 2026-07-29 10:00 |  |  | start no earlier than 2026-07-29 09:00 |

## Version 2 (saved 2026-03-26)

Note of the change: upd lab 3

Last finish 2026-07-29 → 2026-07-22 (-7d).

Removed: 50 Совещание 22

Changed:

| ID | Task | Start | Finish | Duration | Total float | Other |
| --- | --- | --- | --- | --- | --- | --- |
| 1 | Начало проекта |  |  |  | 46.14d → 41.25d | baseline start 2026-03-02 09:00 → none; baseline finish 2026-03-02 09:00 → none |
| 2 | **Создание интерфейса** |  | 2026-06-24 11:07 → 2026-06-16 14:05 (-8d) | 77.89d → 72.14d | 0d → 0.93d | baseline start 2026-03-02 09:00 → none; baseline finish 2026-06-24 11:07 → none |
| 3 | **Разработка дизайна интерфейса** |  |  |  | 46.14d → 41.25d | baseline start 2026-03-02 09:00 → none; baseline finish 2026-04-07 15:00 → none |
| 4 | Разработка 2D графических элементов |  |  |  | 46.14d → 41.25d | baseline start 2026-03-02 09:00 → none; baseline finish 2026-03-24 12:00 → none |
| 5 | Разработка 3D графических элементов |  |  |  | 46.14d → 41.25d | baseline start 2026-03-02 09:00 → none; baseline finish 2026-03-17 11:00 → none |
| 6 | Создание заставки |  |  |  | 46.14d → 41.25d | baseline start 2026-03-17 11:00 → none; baseline finish 2026-04-07 15:00 → none |
| 7 | Программирование интерфейса | 2026-06-16 10:07 → 2026-06-05 11:05 (-11d) | 2026-06-24 11:07 → 2026-06-16 14:05 (-8d) |  | 0d → 0.93d | resources Программист#3; Программист#4; Программист#1; Программист#2; Ведущий программист → Программист#3; Программист#4; Ведущий программист; Программист#1; Программист#2; baseline start 2026-06-16 10:07 → none; baseline finish 2026-06-24 11:07 → none |
| 8 | **Построение базы объектов** |  | 2026-07-27 09:00 → 2026-07-17 16:49 (-10d) | 85.25d → 80.1d | 2.61d → 2.27d | baseline start 2026-03-24 13:00 → none; baseline finish 2026-07-27 09:00 → none |
| 9 | Анализ и построение структуры базы объектов |  |  |  | 2.61d → 2.27d | baseline start 2026-03-24 13:00 → none; baseline finish 2026-04-07 15:00 → none |
| 10 | Программирование средств обработки базы объектов |  | 2026-04-28 15:00 → 2026-04-21 13:49 (-7d) | 3w → 1.97w | 2.61d → 2.27d | resources Программист#3; Программист#4 → Программист#3; Программист#4; Программист#1; Программист#2; baseline start 2026-04-07 15:00 → none; baseline finish 2026-04-28 15:00 → none |
| 11 | Наполнение базы объектов | 2026-04-28 15:00 → 2026-04-21 13:49 (-7d) | 2026-07-27 09:00 → 2026-07-17 16:49 (-10d) |  | 2.61d → 2.27d | baseline start 2026-04-28 15:00 → none; baseline finish 2026-07-27 09:00 → none |
| 12 | **Создание ядра GIS** |  | 2026-06-16 10:07 → 2026-06-05 11:05 (-11d) | 71.77d → 66.01d | 0d → 0.93d | baseline start 2026-03-02 09:00 → none; baseline finish 2026-06-16 10:07 → none |
| 13 | Анализ и проектирование ядра |  |  |  | 0d → 0.93d | baseline start 2026-03-02 09:00 → none; baseline finish 2026-03-24 12:00 → none |
| 14 | Создание модели ядра |  |  |  | 0d → 0.93d | baseline start 2026-03-24 13:00 → none; baseline finish 2026-04-07 13:49 → none |
| 15 | Тестирование модели ядра |  |  |  | 0d → 0.93d | baseline start 2026-04-07 13:49 → none; baseline finish 2026-04-10 08:49 → none |
| 16 | Создание рабочей версии ядра |  | 2026-06-16 10:07 → 2026-06-05 11:05 (-11d) | 8.76w → 7.51w | 0d → 0.93d | baseline start 2026-04-10 08:49 → none; baseline finish 2026-06-16 10:07 → none |
| 17 | Создание мультимедия - наполнения |  |  |  | 46.73d → 81.25d | baseline start 2026-04-07 15:00 → none; baseline finish 2026-05-22 16:00 → none |
| 18 | Создание справочной системы | 2026-07-06 16:07 → 2026-06-29 08:00 (-7d) | 2026-07-21 16:07 → 2026-07-15 10:49 (-6d) |  | 5.84d → 4.9d | baseline start 2026-07-06 16:07 → none; baseline finish 2026-07-21 16:07 → none |
| 19 | **Создание руководства пользователя** | 2026-06-09 10:07 → 2026-06-01 13:05 (-8d) | 2026-07-06 16:07 → 2026-06-29 08:05 (-7d) | 18.5d → 18.38d | 0d → 0.93d | baseline start 2026-06-09 10:07 → none; baseline finish 2026-07-06 16:07 → none |
| 20 | Разработка дизайна руководства | 2026-06-09 10:07 → 2026-06-01 13:05 (-8d) | 2026-06-17 15:07 → 2026-06-08 16:05 (-9d) |  | 0d → 0.93d | baseline start 2026-06-09 10:07 → none; baseline finish 2026-06-17 15:07 → none |
| 21 | Написание руководства пользователя | 2026-06-11 11:07 → 2026-06-03 13:05 (-8d) | 2026-07-06 16:07 → 2026-06-29 08:05 (-7d) |  | 0d → 0.93d | baseline start 2026-06-11 11:07 → none; baseline finish 2026-07-06 16:07 → none |
| 22 | **Создание web - сайта и поддержка** | 2026-06-11 11:07 → 2026-06-03 13:05 (-8d) | 2026-07-17 15:07 → 2026-07-09 15:05 (-8d) | 25.38d → 25.12d | 0d → 0.93d | baseline start 2026-06-11 11:07 → none; baseline finish 2026-07-17 15:07 → none |
| 23 | Разработка структуры сайта | 2026-06-11 11:07 → 2026-06-03 13:05 (-8d) | 2026-06-15 11:07 → 2026-06-04 14:05 (-11d) |  | 0d → 0.93d | baseline start 2026-06-11 11:07 → none; baseline finish 2026-06-15 11:07 → none |
| 24 | Разработка дизайна сайта | 2026-06-15 11:07 → 2026-06-04 14:05 (-11d) | 2026-06-25 10:07 → 2026-06-17 11:05 (-8d) | 1.45w → 1.48w | 0d → 0.93d | baseline start 2026-06-15 11:07 → none; baseline finish 2026-06-25 10:07 → none |
| 25 | Наполнение сайта | 2026-06-25 10:07 → 2026-06-17 11:05 (-8d) | 2026-07-17 15:07 → 2026-07-09 15:05 (-8d) |  | 0d → 0.93d | baseline start 2026-06-25 10:07 → none; baseline finish 2026-07-17 15:07 → none |
| 26 | Тестирование сайта | 2026-07-10 15:07 → 2026-07-02 15:05 (-8d) | 2026-07-29 14:52 → 2026-07-21 10:31 (-8d) | 2.59w → 2.51w | 0d → 0.93d | baseline start 2026-07-10 15:07 → none; baseline finish 2026-07-29 14:52 → none |
| 27 | Сдача сайта в эксплуатацию | 2026-07-29 14:52 → 2026-07-21 10:31 (-8d) | 2026-07-29 14:52 → 2026-07-21 10:31 (-8d) |  | 0d → 0.93d | baseline start 2026-07-29 14:52 → none; baseline finish 2026-07-29 14:52 → none |
| 28 | **Совещание** |  | 2026-07-29 10:00 → 2026-07-22 10:00 (-7d) | 100.75d → 95.75d |  | baseline start 2026-03-04 09:00 → none; baseline finish 2026-07-29 10:00 → none |
| 29 | Совещание 1 |  |  |  |  | baseline start 2026-03-04 09:00 → none; baseline finish 2026-03-04 10:00 → none |
| 30 | Совещание 2 |  |  |  |  | baseline start 2026-03-11 09:00 → none; baseline finish 2026-03-11 10:00 → none |
| 31 | Совещание 3 |  |  |  |  | baseline start 2026-03-18 09:00 → none; baseline finish 2026-03-18 10:00 → none |
| 32 | Совещание 4 |  |  |  |  | baseline start 2026-03-25 09:00 → none; baseline finish 2026-03-25 10:00 → none |
| 33 | Совещание 5 |  |  |  |  | baseline start 2026-04-01 09:00 → none; baseline finish 2026-04-01 10:00 → none |
| 34 | Совещание 6 |  |  |  |  | baseline start 2026-04-08 09:00 → none; baseline finish 2026-04-08 10:00 → none |
| 35 | Совещание 7 |  |  |  |  | baseline start 2026-04-15 09:00 → none; baseline finish 2026-04-15 10:00 → none |
| 36 | Совещание 8 |  |  |  |  | baseline start 2026-04-22 09:00 → none; baseline finish 2026-04-22 10:00 → none |
| 37 | Совещание 9 |  |  |  |  | baseline start 2026-04-29 09:00 → none; baseline finish 2026-04-29 10:00 → none |
| 38 | Совещание 10 |  |  |  |  | baseline start 2026-05-06 09:00 → none; baseline finish 2026-05-06 10:00 → none |
| 39 | Совещание 11 |  |  |  |  | baseline start 2026-05-13 09:00 → none; baseline finish 2026-05-13 10:00 → none |
| 40 | Совещание 12 |  |  |  |  | baseline start 2026-05-20 09:00 → none; baseline finish 2026-05-20 10:00 → none |
| 41 | Совещание 13 |  |  |  |  | baseline start 2026-05-27 09:00 → none; baseline finish 2026-05-27 10:00 → none |
| 42 | Совещание 14 |  |  |  |  | baseline start 2026-06-03 09:00 → none; baseline finish 2026-06-03 10:00 → none |
| 43 | Совещание 15 |  |  |  |  | baseline start 2026-06-10 09:00 → none; baseline finish 2026-06-10 10:00 → none |
| 44 | Совещание 16 |  |  |  |  | baseline start 2026-06-17 09:00 → none; baseline finish 2026-06-17 10:00 → none |
| 45 | Совещание 17 |  |  |  |  | baseline start 2026-06-24 09:00 → none; baseline finish 2026-06-24 10:00 → none |
| 46 | Совещание 18 |  |  |  |  | baseline start 2026-07-01 09:00 → none; baseline finish 2026-07-01 10:00 → none |
| 47 | Совещание 19 |  |  |  |  | baseline start 2026-07-08 09:00 → none; baseline finish 2026-07-08 10:00 → none |
| 48 | Совещание 20 |  |  |  |  | baseline start 2026-07-15 09:00 → none; baseline finish 2026-07-15 10:00 → none |
| 49 | Совещание 21 |  |  |  |  | baseline start 2026-07-22 09:00 → none; baseline finish 2026-07-22 10:00 → none |
